Schedule from MS Project, 2022-09-27 to 2022-12-30, costs in ₫.

## Calendars

- Standard: Mon-Fri 08:00-12:00, 13:00-17:00; Sat-Sun off.

## Resources

| Resource | Rate | Cost per use |
| --- | --- | --- |
| Trần Tiến Lộc | 60000 |  |
| Lê Viết Tiến | 70000 |  |
| Nguyễn Tiến Dũng | 65000 |  |
| Nguyễn Việt Trung | 65000 |  |
| Phí gặp khách hàng | 100000 | 500000 |

## Schedule

| ID | WBS | Task | Duration | Start | Finish | Predecessors | Baseline start | Baseline finish | Baseline duration | Total slack | Free slack | Constraint | Resources | Work | Cost | Baseline cost |
| --- | --- | --- | --- | --- | --- | --- | --- | --- | --- | --- | --- | --- | --- | --- | --- | --- |
| 1 | 1 | **Tổng tiến độ dự án Xây dựng mô hình quản lý chuỗi trường học** | 69d | 2022-09-27 | 2022-12-30 |  | 2022-09-27 | 2022-12-30 | 69d | 0d |  |  |  | 1136h | 75,640,000 | 75,640,000 |
| 2 | 1.1 | **Phân tích và thu thập yêu cầu người dùng** | 4d | 2022-09-27 | 2022-09-30 |  | 2022-09-27 | 2022-09-30 | 4d | 5d |  |  |  | 64h | 4,720,000 | 4,720,000 |
| 3 | 1.1.1 | **Thu thập yêu cầu khách hàng** | 2d | 2022-09-27 | 2022-09-28 |  | 2022-09-27 | 2022-09-28 | 2d | 5d |  |  |  | 24h | 2,160,000 | 2,160,000 |
| 4 | 1.1.1.1 | Định hướng, xác định sơ bộ yêu cầu khách hàng | 1d | 2022-09-27 | 2022-09-27 |  | 2022-09-27 | 2022-09-27 | 1d | 5d | 0d |  | Nguyễn Tiến Dũng | 8h | 520,000 | 520,000 |
| 5 | 1.1.1.2 | Gặp khách hàng trao đổi dự án | 1d | 2022-09-28 | 2022-09-28 | 4 | 2022-09-28 | 2022-09-28 | 1d | 5d | 0d |  | Nguyễn Tiến Dũng; Phí gặp khách hàng | 8h | 1,120,000 | 1,120,000 |
| 6 | 1.1.1.3 | Viết báo cáo về yêu cầu người dùng | 1d | 2022-09-28 | 2022-09-28 | 4 | 2022-09-28 | 2022-09-28 | 1d | 5d | 0d |  | Nguyễn Việt Trung | 8h | 520,000 | 520,000 |
| 7 | 1.1.2 | **Mô hình hóa các yêu cầu** | 2d | 2022-09-29 | 2022-09-30 |  | 2022-09-29 | 2022-09-30 | 2d | 5d |  |  |  | 40h | 2,560,000 | 2,560,000 |
| 8 | 1.1.2.1 | Thiết kế Data flow diagram, Activity diagram và Entity Relationship model | 2d | 2022-09-29 | 2022-09-30 | 5, 6 | 2022-09-29 | 2022-09-30 | 2d | 5d | 0d |  | Nguyễn Tiến Dũng; Trần Tiến Lộc | 32h | 2,000,000 | 2,000,000 |
| 9 | 1.1.2.2 | Báo cáo kết quả làm việc | 1d | 2022-09-30 | 2022-09-30 | 8FF | 2022-09-30 | 2022-09-30 | 1d | 5d | 0d |  | Lê Viết Tiến | 8h | 560,000 | 560,000 |
| 10 | 1.2 | **Thiết kế hệ thống** | 10d | 2022-10-03 | 2022-10-14 |  | 2022-10-03 | 2022-10-14 | 10d | 5d |  |  |  | 176h | 12,040,000 | 12,040,000 |
| 11 | 1.2.1 | **Đặc tả phần mềm** | 5d | 2022-10-03 | 2022-10-07 |  | 2022-10-03 | 2022-10-07 | 5d | 5d | 0d |  |  | 72h | 4,640,000 | 4,640,000 |
| 12 | 1.2.1.1 | Xác định yêu cầu chức năng, phi chức năng và đối tượng | 1d | 2022-10-03 | 2022-10-03 | 9 | 2022-10-03 | 2022-10-03 | 1d | 5d | 0d |  | Trần Tiến Lộc | 8h | 480,000 | 480,000 |
| 13 | 1.2.1.2 | Phân tích các service cần thiết | 1d | 2022-10-04 | 2022-10-04 | 12 | 2022-10-04 | 2022-10-04 | 1d | 5d | 0d |  | Nguyễn Tiến Dũng | 8h | 520,000 | 520,000 |
| 14 | 1.2.1.3 | Viết đặc tả cho từng đối tượng | 2d | 2022-10-05 | 2022-10-06 | 12, 13 | 2022-10-05 | 2022-10-06 | 2d | 5d | 0d |  | Nguyễn Tiến Dũng; Trần Tiến Lộc; Lê Viết Tiến | 48h | 3,120,000 | 3,120,000 |
| 15 | 1.2.1.4 | Báo cáo kết quả làm việc, đưa ra SRS cuối cùng | 1d | 2022-10-07 | 2022-10-07 | 14 | 2022-10-07 | 2022-10-07 | 1d | 5d |  |  | Nguyễn Việt Trung | 8h | 520,000 | 520,000 |
| 16 | 1.2.2 | **Xây dựng hệ thống mức sơ bộ** | 5d | 2022-10-10 | 2022-10-14 |  | 2022-10-10 | 2022-10-14 | 5d | 5d |  |  |  | 104h | 7,400,000 | 7,400,000 |
| 17 | 1.2.2.1 | Lựa chọn mô hình dữ liệu, công nghệ sử dụng và cách thức tổ chức code | 1d | 2022-10-10 | 2022-10-10 | 11 | 2022-10-10 | 2022-10-10 | 1d | 5d | 0d |  | Nguyễn Tiến Dũng; Trần Tiến Lộc; Lê Viết Tiến; Nguyễn Việt Trung | 32h | 2,080,000 | 2,080,000 |
| 18 | 1.2.2.2 | Thiết kế UI/UX | 2d | 2022-10-11 | 2022-10-12 | 17 | 2022-10-11 | 2022-10-12 | 2d | 5d | 0d |  | Lê Viết Tiến; Nguyễn Việt Trung | 32h | 2,160,000 | 2,160,000 |
| 19 | 1.2.2.3 | Trao đổi với khách hàng về sản phẩm | 1d | 2022-10-13 | 2022-10-13 | 18 | 2022-10-13 | 2022-10-13 | 1d | 5d | 0d |  | Trần Tiến Lộc; Phí gặp khách hàng | 8h | 1,080,000 | 1,080,000 |
| 20 | 1.2.2.4 | Họp chỉnh sửa dự án theo yêu cầu khách hàng | 1d | 2022-10-14 | 2022-10-14 | 19 | 2022-10-14 | 2022-10-14 | 1d | 5d | 0d |  | Nguyễn Tiến Dũng; Trần Tiến Lộc; Lê Viết Tiến; Nguyễn Việt Trung | 32h | 2,080,000 | 2,080,000 |
| 21 | 1.3 | **Hiện thực dự án** | 25d | 2022-10-17 | 2022-11-18 |  | 2022-10-17 | 2022-11-18 | 25d | 5d |  |  |  | 680h | 44,200,000 | 44,200,000 |
| 22 | 1.3.1 | Thiết kế database | 3d | 2022-10-17 | 2022-10-19 | 20 | 2022-10-17 | 2022-10-19 | 3d | 5d | 0d |  | Nguyễn Tiến Dũng | 24h | 1,560,000 | 1,560,000 |
| 23 | 1.3.2 | Thiết kế Font-end | 25d | 2022-10-17 | 2022-11-18 | 22SS | 2022-10-17 | 2022-11-18 | 25d | 5d | 0d |  | Trần Tiến Lộc; Lê Viết Tiến | 400h | 26,000,000 | 26,000,000 |
| 24 | 1.3.3 | Thiết kế Back-end | 22d | 2022-10-20 | 2022-11-18 | 22, 23FF | 2022-10-20 | 2022-11-18 | 22d | 5d | 0d |  | Nguyễn Việt Trung | 176h | 11,440,000 | 11,440,000 |
| 25 | 1.3.4 | Team DevOpt đảm bảo hệ thống hoạt động bình thường | 10d | 2022-11-07 | 2022-11-18 | 23FF, 24FF | 2022-11-07 | 2022-11-18 | 10d | 5d | 0d | start no earlier than 2022-11-07 | Nguyễn Tiến Dũng | 80h | 5,200,000 | 5,200,000 |

| ID | WBS | Task | Type | Duration | Start | Finish | Predecessors | Baseline start | Baseline finish | Baseline duration | Total slack | Free slack | Constraint | Resources | Work | Cost | Baseline cost |
| --- | --- | --- | --- | --- | --- | --- | --- | --- | --- | --- | --- | --- | --- | --- | --- | --- | --- |
| 26 | 1.4 | **Kiểm tra chất lượng** |  | 20d | 2022-11-21 | 2022-12-16 |  | 2022-11-21 | 2022-12-16 | 20d | 5d |  |  |  | 160h | 10,440,000 | 10,440,000 |
| 27 | 1.4.1 | Unit test, System test và hiệu chỉnh code |  | 5d | 2022-11-21 | 2022-11-25 | 23, 24, 25 | 2022-11-21 | 2022-11-25 | 5d | 5d | 0d |  | Trần Tiến Lộc | 40h | 2,400,000 | 2,400,000 |
| 28 | 1.4.2 | Inspectation, Acceptance test |  | 6d | 2022-11-28 | 2022-12-05 | 27 | 2022-11-28 | 2022-12-05 | 6d | 5d | 0d |  | Lê Viết Tiến | 48h | 3,360,000 | 3,360,000 |
| 29 | 1.4.3 | Báo cáo lỗi, đề xuất điều chỉnh |  | 1d | 2022-12-06 | 2022-12-06 | 28 | 2022-12-06 | 2022-12-06 | 1d | 5d | 0d |  | Nguyễn Việt Trung | 8h | 520,000 | 520,000 |
| 30 | 1.4.4 | Fix bug, hoàn thiện code |  | 8d | 2022-12-07 | 2022-12-16 | 29 | 2022-12-07 | 2022-12-16 | 8d | 5d |  |  | Nguyễn Tiến Dũng | 64h | 4,160,000 | 4,160,000 |
| 31 | 1.5 | Tuần dự phòng | manual | 5d | 2022-12-19 | 2022-12-23 |  | 2022-12-19 | 2022-12-23 | 5d |  |  |  |  |  |  |  |
| 32 | 1.6 | **Hoàn tất dự án** |  | 5d | 2022-12-26 | 2022-12-30 |  | 2022-12-26 | 2022-12-30 | 5d | 0d |  |  |  | 56h | 4,240,000 | 4,240,000 |
| 33 | 1.6.1 | Chuyển giao sản phẩm và hướng dẫn sử dụng cho khách hàng (bản demo) | manual | 2d | 2022-12-26 | 2022-12-27 | 30 | 2022-12-26 | 2022-12-27 | 2d |  |  |  | Trần Tiến Lộc; Phí gặp khách hàng | 16h | 1,560,000 | 1,560,000 |
| 34 | 1.6.2 | Nhận feedback và chỉnh sửa lần cuối |  | 2d | 2022-12-28 | 2022-12-29 | 33 | 2022-12-28 | 2022-12-29 | 2d | 0d |  | start no earlier than 2022-12-28 | Nguyễn Tiến Dũng; Lê Viết Tiến | 32h | 2,160,000 | 2,160,000 |
| 35 | 1.6.3 | Chuyển giao hoàn toàn sản phẩm |  | 1d | 2022-12-30 | 2022-12-30 | 34 | 2022-12-30 | 2022-12-30 | 1d | 0d |  |  | Nguyễn Việt Trung | 8h | 520,000 | 520,000 |
